# Aurora Hotel Final

Schedule from MS Project, 2017-10-13 to 2018-07-06, costs in £.

## Calendars

- Standard: Mon-Fri 08:00-12:00, 13:00-17:00; Sat-Sun off. Exceptions (off unless hours are given): 2017-12-25 to 2018-01-02 (Chirstmas Holiday).

## Resources

| Resource | Rate |
| --- | --- |
| Project Manager | 22.12 |
| Program Manager | 11.54 |
| Software Architect | 24.04 |
| Senior Programmer | 20.67 |
| Senior Tester | 20.19 |
| System Admin | 15.38 |
| Tester | 15.38 |
| Designer | 15.38 |
| Programmer | 18.03 |
| Chief Executive Officer | 43.19 |
| Chief Technical Officer | 38.46 |
| Marketing Manager | 14.42 |
| Operations Manager | 21.63 |
| HR Manager | 14.42 |
| Chief Financial Officer | 33.65 |
| Laptop |  |
| Visual Studio 2017 |  |
| Microsoft Office |  |
| Visual Paradigm 13 |  |
| Windows Server |  |
| SQL Server |  |
| Dell R730 Server 1 |  |
| Dell R730 Server 2 |  |

## Schedule

| ID | WBS | Task | Type | Duration | Start | Finish | Predecessors | Total slack | Free slack | Resources | Work | Cost |
| --- | --- | --- | --- | --- | --- | --- | --- | --- | --- | --- | --- | --- |
| 1 | 1 | **Aurora Hotel Project** |  | 184d | 2017-10-13 | 2018-07-06 |  | 0d |  |  | 11176h | 237,366.16 |
| 2 | 1.1 | **Initiating** |  | 21d | 2017-10-13 | 2017-11-10 |  | 9d | 0d |  | 1000h | 19,775.2 |
| 3 | 1.1.1 | Analyse project brief |  | 3d | 2017-10-13 | 2017-10-17 |  | 9d | 0d | Program Manager; Project Manager; Senior Programmer; Senior Tester; Software Architect; System Admin | 144h | 2,734.56 |
| 4 | 1.1.2 | **Identify Stakeholders** |  | 5d | 2017-10-18 | 2017-10-24 |  | 9d |  |  | 240h | 4,557.6 |
| 5 | 1.1.2.1 | Identify Stakeholders |  | 2d | 2017-10-18 | 2017-10-19 | 3 | 9d | 0d | Program Manager; Project Manager; Senior Programmer; Senior Tester; Software Architect; System Admin | 96h | 1,823.04 |
| 6 | 1.1.2.2 | Create Key Stakeholder Register |  | 1d | 2017-10-20 | 2017-10-20 | 5 | 9d | 0d | Program Manager; Project Manager; Senior Programmer; Senior Tester; Software Architect; System Admin | 48h | 911.52 |
| 7 | 1.1.2.3 | Create Key Stakeholder Matrix - Ranking Stakeholders |  | 1d | 2017-10-23 | 2017-10-23 | 6 | 9d | 0d | Program Manager; Project Manager; Senior Programmer; Senior Tester; Software Architect; System Admin | 48h | 911.52 |
| 8 | 1.1.2.4 | Create Key Stakeholder Engagement Strategy |  | 1d | 2017-10-24 | 2017-10-24 | 7 | 9d | 0d | Program Manager; Project Manager; Senior Programmer; Senior Tester; Software Architect; System Admin | 48h | 911.52 |
| 9 | 1.1.3 | **Create Project Charter** |  | 6.88d | 2017-10-25 | 2017-11-02 |  | 9d |  |  | 311h | 6,307.88 |
| 10 | 1.1.3.1 | Write Project Charter |  | 1w | 2017-10-25 | 2017-10-31 | 8 | 9d | 0d | Program Manager; Project Manager; Senior Programmer; Senior Tester; Software Architect; System Admin | 240h | 4,557.6 |
| 11 | 1.1.3.2 | Get Charter Signed Off |  | 1d | 2017-11-01 | 2017-11-01 | 10 | 9d | 0d | Chief Executive Officer; Chief Financial Officer; Chief Technical Officer; HR Manager; Marketing Manager; Operations Manager; Program Manager; Project Manager | 64h | 1,595.44 |
| 12 | 1.1.3.3 | Distibute Project Charter to Employees |  | 7h | 2017-11-02 | 2017-11-02 | 11 | 9d | 0d | Project Manager | 7h | 154.84 |
| 13 | 1.1.4 | **Create Project Plan** |  | 6.12d | 2017-11-02 | 2017-11-10 |  | 9d |  |  | 305h | 6,175.16 |
| 14 | 1.1.4.1 | Send "what quality means" email to all team members |  | 1h | 2017-11-02 | 2017-11-02 | 12 | 9d | 0d | Project Manager | 1h | 22.12 |
| 15 | 1.1.4.2 | Create Project Plan |  | 1w | 2017-11-03 | 2017-11-09 | 14 | 9d | 0d | Program Manager; Project Manager; Senior Programmer; Senior Tester; Software Architect; System Admin | 240h | 4,557.6 |
| 16 | 1.1.4.3 | Get Project Plan Signed Off |  | 1d | 2017-11-10 | 2017-11-10 | 15 | 9d | 0d | Chief Executive Officer; Chief Financial Officer; Chief Technical Officer; HR Manager; Marketing Manager; Operations Manager; Program Manager; Project Manager | 64h | 1,595.44 |
| 17 | 1.1.5 | Initiating milestone | milestone | 0d | 2017-11-10 | 2017-11-10 | 16 | 9d |  |  |  |  |
| 18 | 1.2 | **Planning** |  | 31d | 2017-11-13 | 2018-01-03 | 2 | 0d |  |  | 1096h | 31,169.8 |
| 19 | 1.2.1 | **Identify Scope** |  | 27d | 2017-11-13 | 2017-12-19 |  | 0d |  |  | 904h | 27,523.72 |
| 20 | 1.2.1.1 | Create questionnaire for non key stakeholders |  | 2d | 2017-11-13 | 2017-11-14 |  | 9d | 0d | Program Manager; Project Manager; Senior Programmer; Senior Tester; Software Architect; System Admin | 96h | 1,823.04 |
| 21 | 1.2.1.2 | Distribute questionnaire to non key stakeholders |  | 1d | 2017-11-15 | 2017-11-15 | 20 | 9d | 0d | Project Manager | 8h | 176.96 |
| 22 | 1.2.1.3 | Collect and analyse questionnaire answers |  | 1d | 2017-11-16 | 2017-11-16 | 21 | 9d | 0d | Project Manager; Senior Programmer; Senior Tester; Software Architect; System Admin | 40h | 819.2 |
| 23 | 1.2.1.4 | Create questions for face-to-face interview with key stakeholders |  | 2d | 2017-11-17 | 2017-11-20 | 22 | 9d | 0d | Program Manager; Project Manager; Senior Programmer; Senior Tester; Software Architect; System Admin | 96h | 1,823.04 |
| 24 | 1.2.1.5 | Carry out face-to-face interview with key stakeholders |  | 3d | 2017-11-21 | 2017-11-23 | 23 | 9d | 0d | Project Manager; Software Architect | 48h | 1,107.84 |
| 25 | 1.2.1.6 | Observation of current hotel procedures |  | 2d | 2017-11-24 | 2017-11-27 | 24 | 9d | 0d | Project Manager; Senior Programmer; Senior Tester; Software Architect; System Admin | 80h | 1,638.4 |
| 26 | 1.2.1.7 | Inspect organisation documents - doc review |  | 2d | 2017-11-28 | 2017-11-29 | 25 | 9d | 0d | Project Manager; Senior Programmer; Senior Tester; Software Architect; System Admin | 80h | 1,638.4 |
| 27 | 1.2.1.8 | Create functional & non-functional requirements |  | 2d | 2017-11-30 | 2017-12-01 | 26 | 9d | 0d | Project Manager; Senior Programmer; Senior Tester; Software Architect; System Admin | 80h | 1,638.4 |
| 28 | 1.2.1.9 | Risk PMR3 (status: YELLOW) - Get functional and non-functional requirements signed off by key stakeholders |  | 1d | 2017-12-04 | 2017-12-04 | 27 | 9d | 0d | Project Manager | 8h | 176.96 |
| 29 | 1.2.1.10 | Create user stories |  | 2d | 2017-12-05 | 2017-12-06 | 28 | 9d |  | Project Manager; Senior Programmer; Senior Tester; Software Architect; System Admin | 80h | 1,638.4 |
| 30 | 1.2.1.11 | Investigate development methods |  | 1w | 2017-11-15 | 2017-12-07 |  | 7d | 0d | Senior Programmer; Senior Tester; Software Architect | 96h | 2,019.04 |
| 31 | 1.2.1.12 | Choose development method |  | 1d | 2017-12-08 | 2017-12-08 | 30 | 7d |  | Chief Technical Officer; Program Manager; Project Manager; Senior Programmer; Software Architect; Senior Tester | 48h | 1,096.16 |
| 32 | 1.2.1.13 | Investigate development environments |  | 1w | 2017-12-11 | 2017-12-18 |  | 0d |  | Senior Programmer; Senior Tester; Software Architect | 96h | 2,019.04 |
| 33 | 1.2.1.14 | Choose development environment |  | 1d | 2017-12-19 | 2017-12-19 | 32 | 0d |  | Chief Technical Officer; Program Manager; Project Manager; Senior Programmer; Senior Tester; Software Architect; SQL Server [0.1%]; Visual Paradigm 13 [0.1%]; Visual Studio 2017 [0.1%]; Windows Server [0.1%] | 48h | 9,908.84 |

| ID | WBS | Task | Type | Duration | Start | Finish | Predecessors | Total slack | Resources | Work | Cost |
| --- | --- | --- | --- | --- | --- | --- | --- | --- | --- | --- | --- |
| 34 | 1.2.2 | **Project Plans Development** |  | 4d | 2017-12-20 | 2018-01-03 | 19 | 0d |  | 192h | 3,646.08 |
| 35 | 1.2.2.1 | Create Stakeholder Management Plan |  | 1d | 2017-12-20 | 2017-12-20 |  | 0d | Program Manager; Project Manager; Senior Programmer; Senior Tester; Software Architect; System Admin | 48h | 911.52 |
| 36 | 1.2.2.2 | Create Quality Management Plan |  | 1d | 2017-12-21 | 2017-12-21 | 35 | 0d | Program Manager; Project Manager; Senior Programmer; Senior Tester; Software Architect; System Admin | 48h | 911.52 |
| 37 | 1.2.2.3 | Create Risk Management Plan |  | 1d | 2018-01-03 | 2018-01-03 | 38 | 0d | Program Manager; Project Manager; Senior Programmer; Senior Tester; Software Architect; System Admin | 48h | 911.52 |
| 38 | 1.2.2.4 | Create Budget Management Plan |  | 1d | 2017-12-22 | 2017-12-22 | 36 | 0d | Program Manager; Project Manager; Senior Programmer; Senior Tester; Software Architect; System Admin | 48h | 911.52 |
| 39 | 1.2.3 | Planning milestone | milestone | 0d | 2018-01-03 | 2018-01-03 | 34 | 0d |  |  |  |
| 40 | 1.3 | **Executing** |  | 122d | 2018-01-04 | 2018-06-22 | 18 | 0d |  | 7240h | 143,004.44 |
| 41 | 1.3.1 | Create product backlog |  | 1d | 2018-01-04 | 2018-01-04 |  | 0d | Chief Technical Officer; Program Manager; Project Manager; Senior Programmer; Senior Tester; Software Architect; System Admin | 56h | 1,219.2 |
| 42 | 1.3.2 | Programmer skills workshop (get developers up to speed with technology stack) |  | 1d | 2018-01-05 | 2018-01-05 | 41 | 0d | Programmer [400%]; Senior Programmer | 16h | 309.6 |
| 43 | 1.3.3 | **Sprint 1** |  | 15d | 2018-01-08 | 2018-01-26 | 42 | 0d |  | 1072h | 29,254.64 |
| 44 | 1.3.3.1 | Prepare sprint backlog |  | 1d | 2018-01-08 | 2018-01-08 |  | 0d | Program Manager; Project Manager; Senior Programmer; Software Architect | 32h | 626.96 |
| 45 | 1.3.3.2 | **Implement sprint backlog** |  | 12d | 2018-01-09 | 2018-01-24 |  | 0d |  | 864h | 24,780.48 |
| 46 | 1.3.3.2.1 | US001 - Browse available hotel rooms |  | 12d | 2018-01-09 | 2018-01-24 | 44 | 0d | Programmer; Laptop [0.1%] | 96h | 2,430.88 |
| 47 | 1.3.3.2.2 | US004 - Register for the hotel by entering my details |  | 12d | 2018-01-09 | 2018-01-24 | 46SS | 0d | Programmer; Laptop [0.1%] | 96h | 2,430.88 |
| 48 | 1.3.3.2.3 | US005 - Sign in to the web site |  | 12d | 2018-01-09 | 2018-01-24 | 47SS | 0d | Programmer; Laptop [0.1%] | 96h | 2,430.88 |
| 49 | 1.3.3.2.4 | US006 - Book a hotel room by specifying the number of beds, start time and duration |  | 12d | 2018-01-09 | 2018-01-24 | 48SS | 0d | Programmer; Laptop [0.1%] | 96h | 2,430.88 |
| 50 | 1.3.3.2.5 | Sprint test work |  | 12d | 2018-01-09 | 2018-01-24 | 49SS | 0d | Senior Tester; Tester | 192h | 3,414.72 |
| 51 | 1.3.3.2.6 | Sprint deployment work |  | 12d | 2018-01-09 | 2018-01-24 | 50SS | 0d | System Admin; Dell R730 Server 1 [0.1%]; Dell R730 Server 2 [0.1%] | 96h | 7,481.44 |
| 52 | 1.3.3.2.7 | Sprint design work |  | 12d | 2018-01-09 | 2018-01-24 | 51SS | 0d | Designer; Laptop [0.1%] | 96h | 2,176.48 |
| 53 | 1.3.3.2.8 | Sprint management |  | 12d | 2018-01-09 | 2018-01-24 | 52SS | 0d | Senior Programmer | 96h | 1,984.32 |
| 54 | 1.3.3.3 | Sprint review |  | 1d | 2018-01-25 | 2018-01-25 | 45 | 0d | Chief Executive Officer; Chief Financial Officer; Chief Technical Officer; Designer; HR Manager; Marketing Manager; Operations Manager; Program Manager; Programmer; Project Manager; Senior Programmer; Senior Tester; Software Architect; System Admin; Tester | 120h | 2,628 |
| 55 | 1.3.3.4 | Update product backlog |  | 1d | 2018-01-26 | 2018-01-26 | 54 | 0d | Chief Technical Officer; Program Manager; Project Manager; Senior Programmer; Senior Tester; Software Architect; System Admin | 56h | 1,219.2 |
| 56 | 1.3.3.5 | Sprint 1 complete | milestone | 0d | 2018-01-26 | 2018-01-26 | 55 | 0d |  |  |  |
| 57 | 1.3.4 | **Sprint 2** |  | 15d | 2018-01-29 | 2018-02-16 | 43 | 0d |  | 1072h | 19,749.68 |
| 58 | 1.3.4.1 | Prepare sprint backlog |  | 1d | 2018-01-29 | 2018-01-29 |  | 0d | Program Manager; Project Manager; Senior Programmer; Software Architect | 32h | 626.96 |

| ID | WBS | Task | Type | Duration | Start | Finish | Predecessors | Total slack | Resources | Work | Cost |
| --- | --- | --- | --- | --- | --- | --- | --- | --- | --- | --- | --- |
| 59 | 1.3.4.2 | **Implement sprint backlog** |  | 12d | 2018-01-30 | 2018-02-14 |  | 0d |  | 864h | 15,275.52 |
| 60 | 1.3.4.2.1 | US007 - Make a payment for the hotel room, either by credit or debit card, PayPal, or in cash |  | 12d | 2018-01-30 | 2018-02-14 | 58 | 0d | Programmer | 96h | 1,730.88 |
| 61 | 1.3.4.2.2 | US018 - Check guests into the hotel and take any outstanding payments (cash payments etc) |  | 12d | 2018-01-30 | 2018-02-14 | 60SS | 0d | Programmer | 96h | 1,730.88 |
| 62 | 1.3.4.2.3 | US019 - Be able to book hotel rooms for customers |  | 12d | 2018-01-30 | 2018-02-14 | 61SS | 0d | Programmer | 96h | 1,730.88 |
| 63 | 1.3.4.2.4 | US020 - Check guests out of the hotel, and pay for any extras |  | 12d | 2018-01-30 | 2018-02-14 | 62SS | 0d | Programmer | 96h | 1,730.88 |
| 64 | 1.3.4.2.5 | Sprint test work |  | 12d | 2018-01-30 | 2018-02-14 | 63SS | 0d | Senior Tester; Tester | 192h | 3,414.72 |
| 65 | 1.3.4.2.6 | Sprint deployment work |  | 12d | 2018-01-30 | 2018-02-14 | 64SS | 0d | System Admin | 96h | 1,476.48 |
| 66 | 1.3.4.2.7 | Sprint design work |  | 12d | 2018-01-30 | 2018-02-14 | 65SS | 0d | Designer | 96h | 1,476.48 |
| 67 | 1.3.4.2.8 | Sprint management |  | 12d | 2018-01-30 | 2018-02-14 | 66SS | 0d | Senior Programmer | 96h | 1,984.32 |
| 68 | 1.3.4.3 | Sprint review |  | 1d | 2018-02-15 | 2018-02-15 | 59 | 0d | Chief Executive Officer; Chief Financial Officer; Chief Technical Officer; Designer; HR Manager; Marketing Manager; Operations Manager; Program Manager; Programmer; Project Manager; Senior Programmer; Senior Tester; Software Architect; System Admin; Tester | 120h | 2,628 |
| 69 | 1.3.4.4 | Update product backlog |  | 1d | 2018-02-16 | 2018-02-16 | 68 | 0d | Chief Technical Officer; Program Manager; Project Manager; Senior Programmer; Senior Tester; Software Architect; System Admin | 56h | 1,219.2 |
| 70 | 1.3.4.5 | Sprint 2 complete | milestone | 0d | 2018-02-16 | 2018-02-16 | 69 | 0d |  |  |  |
| 71 | 1.3.5 | **Sprint 3** |  | 15d | 2018-02-19 | 2018-03-09 | 57 | 0d |  | 1059h | 19,457.72 |
| 72 | 1.3.5.1 | Prepare sprint backlog |  | 1d | 2018-02-19 | 2018-02-19 |  | 0d | Program Manager; Project Manager; Senior Programmer; Software Architect | 32h | 626.96 |
| 73 | 1.3.5.2 | **Implement sprint backlog** |  | 12d | 2018-02-20 | 2018-03-07 |  | 0d |  | 864h | 15,275.52 |
| 74 | 1.3.5.2.1 | US009 - Be able to cancel my booking |  | 12d | 2018-02-20 | 2018-03-07 | 72 | 0d | Programmer | 96h | 1,730.88 |
| 75 | 1.3.5.2.2 | US010 - Be able to change my booking |  | 12d | 2018-02-20 | 2018-03-07 | 74SS | 0d | Programmer | 96h | 1,730.88 |
| 76 | 1.3.5.2.3 | US013 - Extend my room booking |  | 12d | 2018-02-20 | 2018-03-07 | 75SS | 0d | Programmer | 96h | 1,730.88 |
| 77 | 1.3.5.2.4 | US008 - Update my account details |  | 12d | 2018-02-20 | 2018-03-07 | 76SS | 0d | Programmer | 96h | 1,730.88 |
| 78 | 1.3.5.2.5 | Sprint test work |  | 12d | 2018-02-20 | 2018-03-07 | 77SS | 0d | Senior Tester; Tester | 192h | 3,414.72 |
| 79 | 1.3.5.2.6 | Sprint deployment work |  | 12d | 2018-02-20 | 2018-03-07 | 78SS | 0d | System Admin | 96h | 1,476.48 |
| 80 | 1.3.5.2.7 | Sprint design work |  | 12d | 2018-02-20 | 2018-03-07 | 79SS | 0d | Designer | 96h | 1,476.48 |
| 81 | 1.3.5.2.8 | Sprint management |  | 12d | 2018-02-20 | 2018-03-07 | 80SS | 0d | Senior Programmer | 96h | 1,984.32 |
| 82 | 1.3.5.3 | Risk OR6 (status: YELLOW) - Meet with team member to discuss unexplained absence |  | 1h | 2018-03-08 | 2018-03-08 | 73 | 0d | HR Manager; Project Manager | 2h | 36.54 |
| 83 | 1.3.5.4 | Sprint review |  | 7h | 2018-03-08 | 2018-03-08 | 82 | 0d | Chief Executive Officer; Chief Financial Officer; Chief Technical Officer; Designer; HR Manager; Marketing Manager; Operations Manager; Program Manager; Programmer; Project Manager; Senior Programmer; Senior Tester; Software Architect; System Admin; Tester | 105h | 2,299.5 |
| 84 | 1.3.5.5 | Update product backlog |  | 1d | 2018-03-09 | 2018-03-09 | 83 | 0d | Chief Technical Officer; Program Manager; Project Manager; Senior Programmer; Senior Tester; Software Architect; System Admin | 56h | 1,219.2 |
| 85 | 1.3.5.6 | Sprint 3 complete | milestone | 0d | 2018-03-09 | 2018-03-09 | 84 | 0d |  |  |  |

| ID | WBS | Task | Type | Duration | Start | Finish | Predecessors | Total slack | Resources | Work | Cost |
| --- | --- | --- | --- | --- | --- | --- | --- | --- | --- | --- | --- |
| 86 | 1.3.6 | **Sprint 4** |  | 15d | 2018-03-12 | 2018-03-30 | 71 | 0d |  | 1072h | 19,749.68 |
| 87 | 1.3.6.1 | Prepare sprint backlog |  | 1d | 2018-03-12 | 2018-03-12 |  | 0d | Program Manager; Project Manager; Senior Programmer; Software Architect | 32h | 626.96 |
| 88 | 1.3.6.2 | **Implement sprint backlog** |  | 12d | 2018-03-13 | 2018-03-28 |  | 0d |  | 864h | 15,275.52 |
| 89 | 1.3.6.2.1 | US012 - View my current checkout time during my stay |  | 12d | 2018-03-13 | 2018-03-28 | 87 | 0d | Programmer | 96h | 1,730.88 |
| 90 | 1.3.6.2.2 | US017 - Be able to see the schedule of who is due to check-in and check-out on that day |  | 12d | 2018-03-13 | 2018-03-28 | 89SS | 0d | Programmer | 96h | 1,730.88 |
| 91 | 1.3.6.2.3 | US015 - View the status of rooms to see which are available, occupied, or booked |  | 12d | 2018-03-13 | 2018-03-28 | 90SS | 0d | Programmer | 96h | 1,730.88 |
| 92 | 1.3.6.2.4 | US016 - Move customers between hotel rooms |  | 12d | 2018-03-13 | 2018-03-28 | 91SS | 0d | Programmer | 96h | 1,730.88 |
| 93 | 1.3.6.2.5 | Sprint test work |  | 12d | 2018-03-13 | 2018-03-28 | 92SS | 0d | Senior Tester; Tester | 192h | 3,414.72 |
| 94 | 1.3.6.2.6 | Sprint deployment work |  | 12d | 2018-03-13 | 2018-03-28 | 93SS | 0d | System Admin | 96h | 1,476.48 |
| 95 | 1.3.6.2.7 | Sprint design work |  | 12d | 2018-03-13 | 2018-03-28 | 94SS | 0d | Designer | 96h | 1,476.48 |
| 96 | 1.3.6.2.8 | Sprint management |  | 12d | 2018-03-13 | 2018-03-28 | 95SS | 0d | Senior Programmer | 96h | 1,984.32 |
| 97 | 1.3.6.3 | Sprint review |  | 1d | 2018-03-29 | 2018-03-29 | 88 | 0d | Chief Executive Officer; Chief Financial Officer; Chief Technical Officer; Designer; HR Manager; Marketing Manager; Operations Manager; Program Manager; Programmer; Project Manager; Senior Programmer; Senior Tester; Software Architect; System Admin; Tester | 120h | 2,628 |
| 98 | 1.3.6.4 | Update product backlog |  | 1d | 2018-03-30 | 2018-03-30 | 97 | 0d | Chief Technical Officer; Program Manager; Project Manager; Senior Programmer; Senior Tester; Software Architect; System Admin | 56h | 1,219.2 |
| 99 | 1.3.6.5 | Sprint 4 complete | milestone | 0d | 2018-03-30 | 2018-03-30 | 98 | 0d |  |  |  |
| 100 | 1.3.7 | **Sprint 5** |  | 15d | 2018-04-02 | 2018-04-20 | 86 | 0d |  | 1061h | 19,506.04 |
| 101 | 1.3.7.1 | Prepare sprint backlog |  | 1d | 2018-04-02 | 2018-04-02 |  | 0d | Program Manager; Project Manager; Senior Programmer; Software Architect | 32h | 626.96 |
| 102 | 1.3.7.2 | **Implement sprint backlog** |  | 12d | 2018-04-03 | 2018-04-18 |  | 0d |  | 864h | 15,275.52 |
| 103 | 1.3.7.2.1 | US014 - Add, remove, and update staff details on the system |  | 12d | 2018-04-03 | 2018-04-18 | 101 | 0d | Programmer | 96h | 1,730.88 |
| 104 | 1.3.7.2.2 | US027 - Add, remove, and update room descriptions |  | 12d | 2018-04-03 | 2018-04-18 | 103SS | 0d | Programmer | 96h | 1,730.88 |
| 105 | 1.3.7.2.3 | US025 - Update customer details |  | 12d | 2018-04-03 | 2018-04-18 | 104SS | 0d | Programmer | 96h | 1,730.88 |
| 106 | 1.3.7.2.4 | US026 - Suspend and unsuspend customer accounts |  | 12d | 2018-04-03 | 2018-04-18 | 105SS | 0d | Programmer | 96h | 1,730.88 |
| 107 | 1.3.7.2.5 | Sprint test work |  | 12d | 2018-04-03 | 2018-04-18 | 106SS | 0d | Senior Tester; Tester | 192h | 3,414.72 |
| 108 | 1.3.7.2.6 | Sprint deployment work |  | 12d | 2018-04-03 | 2018-04-18 | 107SS | 0d | System Admin | 96h | 1,476.48 |
| 109 | 1.3.7.2.7 | Sprint design work |  | 12d | 2018-04-03 | 2018-04-18 | 108SS | 0d | Designer | 96h | 1,476.48 |
| 110 | 1.3.7.2.8 | Sprint management |  | 12d | 2018-04-03 | 2018-04-18 | 109SS | 0d | Senior Programmer | 96h | 1,984.32 |
| 111 | 1.3.7.3 | Risk BR3 (status: YELLOW) - Stakeholder not happy with implementation of US026, feels requirements were not followed, agreed to rework in next sprint |  | 1h | 2018-04-19 | 2018-04-19 | 102 | 0d | Programmer; Project Manager; Senior Programmer; Software Architect | 4h | 84.86 |
| 112 | 1.3.7.4 | Sprint review |  | 7h | 2018-04-19 | 2018-04-19 | 111 | 0d | Chief Executive Officer; Chief Financial Officer; Chief Technical Officer; Designer; HR Manager; Marketing Manager; Operations Manager; Program Manager; Programmer; Project Manager; Senior Programmer; Senior Tester; Software Architect; System Admin; Tester | 105h | 2,299.5 |
| 113 | 1.3.7.5 | Update product backlog |  | 1d | 2018-04-20 | 2018-04-20 | 112 | 0d | Chief Technical Officer; Program Manager; Project Manager; Senior Programmer; Senior Tester; Software Architect; System Admin | 56h | 1,219.2 |
| 114 | 1.3.7.6 | Sprint 5 complete | milestone | 0d | 2018-04-20 | 2018-04-20 | 113 | 0d |  |  |  |

| ID | WBS | Task | Type | Duration | Start | Finish | Predecessors | Total slack | Free slack | Resources | Work | Cost |
| --- | --- | --- | --- | --- | --- | --- | --- | --- | --- | --- | --- | --- |
| 115 | 1.3.8 | **Sprint 6** |  | 21d | 2018-04-23 | 2018-05-21 | 100 | 0d |  |  | 952h | 17,469.96 |
| 116 | 1.3.8.1 | Prepare sprint backlog |  | 1d | 2018-04-23 | 2018-04-23 |  | 0d |  | Program Manager; Project Manager; Senior Programmer; Software Architect | 32h | 626.96 |
| 117 | 1.3.8.2 | **Implement sprint backlog** |  | 18d | 2018-04-24 | 2018-05-17 | 116 | 0d |  |  | 768h | 13,544.64 |
| 118 | 1.3.8.2.1 | US021 - See which rooms require cleaning and which are marked as do not disturb |  | 8d | 2018-04-24 | 2018-05-03 |  | 6d | 0d | Programmer | 64h | 1,153.92 |
| 119 | 1.3.8.2.2 | US026 (rework) - Suspend and unsuspend customer accounts |  | 4d | 2018-05-04 | 2018-05-09 | 118 | 6d |  | Programmer | 32h | 576.96 |
| 120 | 1.3.8.2.3 | US022 - Generate reports about the popularity of the hotel during the year |  | 4d | 2018-04-24 | 2018-04-27 |  | 6d | 0d | Programmer | 32h | 576.96 |
| 121 | 1.3.8.2.4 | US023 - Generate reports about the popularity of different rooms in the hotel |  | 4d | 2018-04-30 | 2018-05-03 | 120 | 6d | 0d | Programmer | 32h | 576.96 |
| 122 | 1.3.8.2.5 | US024 - Generate reports about the guests of the hotel |  | 4d | 2018-05-04 | 2018-05-09 | 121 | 6d |  | Programmer | 32h | 576.96 |
| 123 | 1.3.8.2.6 | US029 - Add and remove sales and offers |  | 6d | 2018-04-24 | 2018-05-01 |  | 0d |  | Programmer | 48h | 865.44 |
| 124 | 1.3.8.2.7 | US031 - Send out mass mailings detailing sales and offers |  | 6d | 2018-05-02 | 2018-05-09 | 123 | 0d |  | Programmer | 48h | 865.44 |
| 125 | 1.3.8.2.8 | Sprint test work |  | 12d | 2018-05-02 | 2018-05-17 | 124SS | 0d |  | Senior Tester; Tester | 192h | 3,414.72 |
| 126 | 1.3.8.2.9 | Sprint deployment work |  | 12d | 2018-05-02 | 2018-05-17 | 125SS | 0d |  | System Admin | 96h | 1,476.48 |
| 127 | 1.3.8.2.10 | Sprint design work |  | 12d | 2018-05-02 | 2018-05-17 | 126SS | 0d |  | Designer | 96h | 1,476.48 |
| 128 | 1.3.8.2.11 | Sprint management |  | 12d | 2018-05-02 | 2018-05-17 | 127SS | 0d |  | Senior Programmer | 96h | 1,984.32 |
| 129 | 1.3.8.3 | Risk TR3 (status: YELLOW) - Recover lost source code from Git repository backup |  | 2h | 2018-05-18 | 2018-05-18 | 117 | 0d |  | Programmer; Senior Programmer; System Admin | 6h | 108.16 |
| 130 | 1.3.8.4 | Sprint review |  | 6h | 2018-05-18 | 2018-05-18 | 129 | 0d |  | Chief Executive Officer; Chief Financial Officer; Chief Technical Officer; Designer; HR Manager; Marketing Manager; Operations Manager; Program Manager; Programmer; Project Manager; Senior Programmer; Senior Tester; Software Architect; System Admin; Tester | 90h | 1,971 |
| 131 | 1.3.8.5 | Update product backlog |  | 1d | 2018-05-21 | 2018-05-21 | 130 | 0d |  | Chief Technical Officer; Program Manager; Project Manager; Senior Programmer; Senior Tester; Software Architect; System Admin | 56h | 1,219.2 |
| 132 | 1.3.8.6 | Sprint 6 complete | milestone | 0d | 2018-05-21 | 2018-05-21 | 131 | 0d |  |  |  |  |
| 133 | 1.3.9 | **Sprint 7** |  | 24d | 2018-05-22 | 2018-06-22 | 115 | 0d |  |  | 880h | 16,287.92 |
| 134 | 1.3.9.1 | Prepare sprint backlog |  | 1d | 2018-05-22 | 2018-05-22 |  | 0d |  | Program Manager; Project Manager; Senior Programmer; Software Architect | 32h | 626.96 |
| 135 | 1.3.9.2 | **Implement sprint backlog** |  | 20d | 2018-05-23 | 2018-06-19 |  | 0d |  |  | 672h | 11,813.76 |
| 136 | 1.3.9.2.1 | US028 - Upload and remove hotel pictures to the gallery |  | 6d | 2018-05-23 | 2018-05-30 | 134 | 8d | 0d | Programmer | 48h | 865.44 |
| 137 | 1.3.9.2.2 | US002 - View a photo galley of the hotel and room |  | 6d | 2018-05-31 | 2018-06-07 | 136 | 8d |  | Programmer | 48h | 865.44 |
| 138 | 1.3.9.2.3 | US011 - Leave a review after my stay |  | 4d | 2018-05-23 | 2018-05-28 | 134 | 0d |  | Programmer | 32h | 576.96 |
| 139 | 1.3.9.2.4 | US030 - Approve, disprove, of remove customer reviews |  | 4d | 2018-05-29 | 2018-06-01 | 138 | 0d |  | Programmer | 32h | 576.96 |
| 140 | 1.3.9.2.5 | US003 - View reviews other customers have left |  | 4d | 2018-06-04 | 2018-06-07 | 139 | 0d |  | Programmer | 32h | 576.96 |
| 141 | 1.3.9.2.6 | Sprint test work |  | 12d | 2018-06-04 | 2018-06-19 | 140SS | 0d |  | Senior Tester; Tester | 192h | 3,414.72 |
| 142 | 1.3.9.2.7 | Sprint deployment work |  | 12d | 2018-06-04 | 2018-06-19 | 141SS | 0d |  | System Admin | 96h | 1,476.48 |
| 143 | 1.3.9.2.8 | Sprint design work |  | 12d | 2018-06-04 | 2018-06-19 | 142SS | 0d |  | Designer | 96h | 1,476.48 |
| 144 | 1.3.9.2.9 | Sprint management |  | 12d | 2018-06-04 | 2018-06-19 | 143SS | 0d |  | Senior Programmer | 96h | 1,984.32 |
| 145 | 1.3.9.3 | Sprint review |  | 1d | 2018-06-20 | 2018-06-20 | 135 | 0d |  | Chief Executive Officer; Chief Financial Officer; Chief Technical Officer; Designer; HR Manager; Marketing Manager; Operations Manager; Program Manager; Programmer; Project Manager; Senior Programmer; Senior Tester; Software Architect; System Admin; Tester | 120h | 2,628 |
| 146 | 1.3.9.4 | Update product backlog |  | 1d | 2018-06-21 | 2018-06-21 | 145 | 0d |  | Chief Technical Officer; Program Manager; Project Manager; Senior Programmer; Senior Tester; Software Architect; System Admin | 56h | 1,219.2 |
| 147 | 1.3.9.5 | Sprint 7 complete | milestone | 0d | 2018-06-21 | 2018-06-21 | 146 | 0d |  |  |  |  |
| 148 | 1.3.9.6 | Pass certification |  | 1d | 2018-06-22 | 2018-06-22 | 147 | 0d |  |  |  |  |
| 149 | 1.3.10 | Executing milestone | milestone | 0d | 2018-06-22 | 2018-06-22 | 133 | 0d |  |  |  |  |

| ID | WBS | Task | Type | Duration | Start | Finish | Predecessors | Total slack | Free slack | Constraint | Resources | Work | Cost |
| --- | --- | --- | --- | --- | --- | --- | --- | --- | --- | --- | --- | --- | --- |
| 150 | 1.4 | **Control** |  | 101d | 2018-01-10 | 2018-05-30 | 40SS | 27d |  |  |  | 1344h | 33,504.24 |
| 151 | 1.4.1 | **Progress Report** |  | 101d | 2018-01-10 | 2018-05-30 |  | 27d | 0d |  |  | 1344h | 33,504.24 |
| 152 | 1.4.1.1 | Progress Report 1 |  | 1d | 2018-01-10 | 2018-01-10 |  | 127d |  | start no earlier than 2018-01-10 | Chief Executive Officer; Chief Financial Officer; Chief Technical Officer; HR Manager; Marketing Manager; Operations Manager; Program Manager; Project Manager | 64h | 1,595.44 |
| 153 | 1.4.1.2 | Progress Report 2 |  | 1d | 2018-01-17 | 2018-01-17 |  | 122d |  | start no earlier than 2018-01-17 | Chief Executive Officer; Chief Financial Officer; Chief Technical Officer; HR Manager; Marketing Manager; Operations Manager; Program Manager; Project Manager | 64h | 1,595.44 |
| 154 | 1.4.1.3 | Progress Report 3 |  | 1d | 2018-01-24 | 2018-01-24 |  | 117d |  | start no earlier than 2018-01-24 | Chief Executive Officer; Chief Financial Officer; Chief Technical Officer; HR Manager; Marketing Manager; Operations Manager; Program Manager; Project Manager | 64h | 1,595.44 |
| 155 | 1.4.1.4 | Progress Report 4 |  | 1d | 2018-01-31 | 2018-01-31 |  | 112d |  | start no earlier than 2018-01-31 | Chief Executive Officer; Chief Financial Officer; Chief Technical Officer; HR Manager; Marketing Manager; Operations Manager; Program Manager; Project Manager | 64h | 1,595.44 |
| 156 | 1.4.1.5 | Progress Report 5 |  | 1d | 2018-02-07 | 2018-02-07 |  | 107d |  | start no earlier than 2018-02-07 | Chief Executive Officer; Chief Financial Officer; Chief Technical Officer; HR Manager; Marketing Manager; Operations Manager; Program Manager; Project Manager | 64h | 1,595.44 |
| 157 | 1.4.1.6 | Progress Report 6 |  | 1d | 2018-02-14 | 2018-02-14 |  | 102d |  | start no earlier than 2018-02-14 | Chief Executive Officer; Chief Financial Officer; Chief Technical Officer; HR Manager; Marketing Manager; Operations Manager; Program Manager; Project Manager | 64h | 1,595.44 |
| 158 | 1.4.1.7 | Progress Report 7 |  | 1d | 2018-02-21 | 2018-02-21 |  | 97d |  | start no earlier than 2018-02-21 | Chief Executive Officer; Chief Financial Officer; Chief Technical Officer; HR Manager; Marketing Manager; Operations Manager; Program Manager; Project Manager | 64h | 1,595.44 |
| 159 | 1.4.1.8 | Progress Report 8 |  | 1d | 2018-02-28 | 2018-02-28 |  | 92d |  | start no earlier than 2018-02-28 | Chief Executive Officer; Chief Financial Officer; Chief Technical Officer; HR Manager; Marketing Manager; Operations Manager; Program Manager; Project Manager | 64h | 1,595.44 |
| 160 | 1.4.1.9 | Progress Report 9 |  | 1d | 2018-03-07 | 2018-03-07 |  | 87d |  | start no earlier than 2018-03-07 | Chief Executive Officer; Chief Financial Officer; Chief Technical Officer; HR Manager; Marketing Manager; Operations Manager; Program Manager; Project Manager | 64h | 1,595.44 |
| 161 | 1.4.1.10 | Progress Report 10 |  | 1d | 2018-03-14 | 2018-03-14 |  | 82d |  | start no earlier than 2018-03-14 | Chief Executive Officer; Chief Financial Officer; Chief Technical Officer; HR Manager; Marketing Manager; Operations Manager; Program Manager; Project Manager | 64h | 1,595.44 |
| 162 | 1.4.1.11 | Progress Report 11 |  | 1d | 2018-03-21 | 2018-03-21 |  | 77d |  | start no earlier than 2018-03-21 | Chief Executive Officer; Chief Financial Officer; Chief Technical Officer; HR Manager; Marketing Manager; Operations Manager; Program Manager; Project Manager | 64h | 1,595.44 |
| 163 | 1.4.1.12 | Progress Report 12 |  | 1d | 2018-03-28 | 2018-03-28 |  | 72d |  | start no earlier than 2018-03-28 | Chief Executive Officer; Chief Financial Officer; Chief Technical Officer; HR Manager; Marketing Manager; Operations Manager; Program Manager; Project Manager | 64h | 1,595.44 |
| 164 | 1.4.1.13 | Progress Report 13 |  | 1d | 2018-04-04 | 2018-04-04 |  | 67d |  | start no earlier than 2018-04-04 | Chief Executive Officer; Chief Financial Officer; Chief Technical Officer; HR Manager; Marketing Manager; Operations Manager; Program Manager; Project Manager | 64h | 1,595.44 |
| 165 | 1.4.1.14 | Progress Report 14 |  | 1d | 2018-04-11 | 2018-04-11 |  | 62d |  | start no earlier than 2018-04-11 | Chief Executive Officer; Chief Financial Officer; Chief Technical Officer; HR Manager; Marketing Manager; Operations Manager; Program Manager; Project Manager | 64h | 1,595.44 |
| 166 | 1.4.1.15 | Progress Report 15 |  | 1d | 2018-04-18 | 2018-04-18 |  | 57d |  | start no earlier than 2018-04-18 | Chief Executive Officer; Chief Financial Officer; Chief Technical Officer; HR Manager; Marketing Manager; Operations Manager; Program Manager; Project Manager | 64h | 1,595.44 |
| 167 | 1.4.1.16 | Progress Report 16 |  | 1d | 2018-04-25 | 2018-04-25 |  | 52d |  | start no earlier than 2018-04-25 | Chief Executive Officer; Chief Financial Officer; Chief Technical Officer; HR Manager; Marketing Manager; Operations Manager; Program Manager; Project Manager | 64h | 1,595.44 |
| 168 | 1.4.1.17 | Progress Report 17 |  | 1d | 2018-05-02 | 2018-05-02 |  | 47d |  | start no earlier than 2018-05-02 | Chief Executive Officer; Chief Financial Officer; Chief Technical Officer; HR Manager; Marketing Manager; Operations Manager; Program Manager; Project Manager | 64h | 1,595.44 |
| 169 | 1.4.1.18 | Progress Report 18 |  | 1d | 2018-05-09 | 2018-05-09 |  | 42d |  | start no earlier than 2018-05-09 | Chief Executive Officer; Chief Financial Officer; Chief Technical Officer; HR Manager; Marketing Manager; Operations Manager; Program Manager; Project Manager | 64h | 1,595.44 |
| 170 | 1.4.1.19 | Progress Report 19 |  | 1d | 2018-05-16 | 2018-05-16 |  | 37d |  | start no earlier than 2018-05-16 | Chief Executive Officer; Chief Financial Officer; Chief Technical Officer; HR Manager; Marketing Manager; Operations Manager; Program Manager; Project Manager | 64h | 1,595.44 |
| 171 | 1.4.1.20 | Progress Report 20 |  | 1d | 2018-05-23 | 2018-05-23 |  | 32d |  | start no earlier than 2018-05-23 | Chief Executive Officer; Chief Financial Officer; Chief Technical Officer; HR Manager; Marketing Manager; Operations Manager; Program Manager; Project Manager | 64h | 1,595.44 |
| 172 | 1.4.1.21 | Progress Report 21 |  | 1d | 2018-05-30 | 2018-05-30 |  | 27d |  | start no earlier than 2018-05-30 | Chief Executive Officer; Chief Financial Officer; Chief Technical Officer; HR Manager; Marketing Manager; Operations Manager; Program Manager; Project Manager | 64h | 1,595.44 |
| 173 | 1.4.2 | Control milestone | milestone | 0d | 2018-05-30 | 2018-05-30 | 151 | 27d |  |  |  |  |  |

| ID | WBS | Task | Type | Duration | Start | Finish | Predecessors | Total slack | Resources | Work | Cost |
| --- | --- | --- | --- | --- | --- | --- | --- | --- | --- | --- | --- |
| 174 | 1.5 | **Closing** |  | 10d | 2018-06-25 | 2018-07-06 | 40 | 0d |  | 496h | 9,912.48 |
| 175 | 1.5.1 | Create final report |  | 5d | 2018-06-25 | 2018-06-29 |  | 0d | Program Manager; Project Manager; Senior Programmer; Senior Tester; Software Architect; System Admin | 240h | 4,557.6 |
| 176 | 1.5.2 | Create final presentation |  | 3d | 2018-07-02 | 2018-07-04 | 175 | 0d | Project Manager; Senior Programmer; Senior Tester; Software Architect; System Admin | 120h | 2,457.6 |
| 177 | 1.5.3 | Lessons learned |  | 1d | 2018-07-05 | 2018-07-05 | 176 | 0d | Chief Executive Officer; Chief Financial Officer; Chief Technical Officer; Designer; HR Manager; Marketing Manager; Operations Manager; Program Manager; Programmer; Project Manager; Senior Programmer; Senior Tester; Software Architect; System Admin; Tester | 120h | 2,628 |
| 178 | 1.5.4 | Archive records |  | 1d | 2018-07-06 | 2018-07-06 | 177 | 0d | Program Manager; Project Manager | 16h | 269.28 |
| 179 | 1.5.5 | Closing milestone | milestone | 0d | 2018-07-06 | 2018-07-06 | 178 | 0d |  |  |  |
